Schedule from GanttProject, 2024-09-02 to 2024-12-30.

## Calendars

- Project calendar: Mon-Fri working; Sat-Sun off.

## Resources

| Resource |
| --- |
| Manager-QA |
| Test TL |
| Web TL |
| Back dev 1 |
| Back dev 2 |
| Back dev 3 |
| Architect+Devops |
| Front dev 1 |
| Front dev 2 |
| Front dev 3 |
| Sys dev 1 |
| Sys dev 2 |
| Sys dev 3 |
| Sys dev 4 |
| Test Analyst 1 |
| Test Analyst 2 |
| QA |

## Schedule

| ID | WBS | Task | Type | Duration | Start | Finish | Predecessors | Complete | Resources | Cost |
| --- | --- | --- | --- | --- | --- | --- | --- | --- | --- | --- |
| 1 | 1 | **OSTEST.ПУИТП** |  | 85d | 2024-09-02 | 2024-12-27 |  |  |  |  |
| 2 | 1.1 | Общее управление |  | 85d | 2024-09-02 | 2024-12-27 |  |  | Manager-QA | 40 |
| 3 | 1.2 | Web: управление |  | 75d | 2024-09-16 | 2024-12-27 | 6 |  | Web TL | 40 |
| 4 | 1.3 | Тесты: управление |  | 75d | 2024-09-16 | 2024-12-27 | 6 |  | Test TL | 40 |
| 5 | 1.4 | Дополнение спецификации API обвязки и Exec |  | 75d | 2024-09-16 | 2024-12-27 | 12, 16 |  | Architect+Devops | 30 |
| 6 | 1.5 | **Фаза 0 - подготовка** |  | 10d | 2024-09-02 | 2024-09-13 |  |  |  |  |
| 7 | 1.5.1 | Фронт: инструкции |  | 5d | 2024-09-02 | 2024-09-06 |  |  | Manager-QA | 3 |
| 8 | 1.5.2 | Фронт: заготовка |  | 5d | 2024-09-09 | 2024-09-13 |  |  | Manager-QA | 6 |
| 9 | 1.5.3 | Бэк: инструкции |  | 5d | 2024-09-02 | 2024-09-06 |  |  | Web TL | 3 |
| 10 | 1.5.4 | Бэк: заготовка |  | 5d | 2024-09-09 | 2024-09-13 |  |  | Web TL | 4 |
| 11 | 1.5.5 | Схема данных |  | 5d | 2024-09-02 | 2024-09-06 |  |  | Architect+Devops | 6 |
| 12 | 1.5.6 | Описание API обвязки |  | 5d | 2024-09-09 | 2024-09-13 |  |  | Architect+Devops | 6 |
| 13 | 1.5.7 | Exec: демо |  | 5d | 2024-09-02 | 2024-09-06 |  |  | Test Analyst 1 | 4 |
| 14 | 1.5.8 | Exec: инструкции |  | 5d | 2024-09-09 | 2024-09-13 |  |  | Test Analyst 2 | 3 |
| 15 | 1.5.9 | Тесты: заготовка |  | 5d | 2024-09-02 | 2024-09-06 |  |  | Test TL | 6 |
| 16 | 1.5.10 | Описание API Exec |  | 5d | 2024-09-09 | 2024-09-13 |  |  | Test TL; Test Analyst 2 | 12 |
| 17 | 1.6 | Фаза 0 - дедлайн | milestone | 0d | 2024-09-16 | 2024-09-16 | 6 |  |  |  |
| 18 | 1.7 | **Фаза 1** |  | 25d | 2024-09-16 | 2024-10-18 | 6 |  |  |  |
| 19 | 1.7.1 | Тесты: доанализ требований |  | 25d | 2024-09-16 | 2024-10-18 |  |  | Test Analyst 1 | 10 |
| 20 | 1.7.2 | Web: доанализ требований |  | 25d | 2024-09-16 | 2024-10-18 |  |  | Test Analyst 2 | 10 |
| 21 | 1.7.3 | Разработка тестовой методологии |  | 15d | 2024-09-16 | 2024-10-04 |  |  | Manager-QA | 10 |
| 22 | 1.7.4 | Изучение требований, терминологии, тестирования |  | 15d | 2024-09-16 | 2024-10-04 |  |  | QA | 15 |
| 23 | 1.7.5 | QA тестов 1 |  | 10d | 2024-10-07 | 2024-10-18 | 21, 22 |  | Manager-QA [50%]; QA [50%] | 10 |
| 24 | 1.7.6 | Тесты: обучение |  | 5d | 2024-09-16 | 2024-09-20 |  |  | Sys dev 3; Sys dev 4 | 4 |
| 25 | 1.7.7 | Тесты исполняемого файла |  | 5d | 2024-09-23 | 2024-09-27 | 24 |  | Sys dev 3 | 2 |
| 26 | 1.7.8 | Тесты модуля конфигурации |  | 5d | 2024-09-23 | 2024-09-27 | 24 |  | Sys dev 4 | 2 |
| 27 | 1.7.9 | Тесты cli |  | 5d | 2024-09-30 | 2024-10-04 |  |  | Sys dev 3 | 2 |
| 28 | 1.7.10 | Тесты логгера |  | 5d | 2024-09-30 | 2024-10-04 |  |  | Sys dev 4 | 2 |
| 29 | 1.7.11 | Тесты IPC |  | 5d | 2024-10-07 | 2024-10-11 |  |  | Sys dev 3 | 2 |
| 30 | 1.7.12 | Тесты корректности кэша |  | 5d | 2024-10-07 | 2024-10-11 |  |  | Sys dev 4 | 2 |
| 31 | 1.7.13 | Интеграция: базовые тесты |  | 5d | 2024-10-14 | 2024-10-18 | 25, 26, 27, 28, 29, 30, 34, 35, 36, 37 |  | Sys dev 1; Sys dev 2; Sys dev 3; Sys dev 4 | 16 |
| 32 | 1.7.14 | Exec: обучение |  | 5d | 2024-09-16 | 2024-09-20 |  |  | Sys dev 1; Sys dev 2 | 4 |
| 33 | 1.7.15 | Exec: запуск бинарника |  | 5d | 2024-09-23 | 2024-09-27 | 32 |  | Sys dev 1 | 4 |
| 34 | 1.7.16 | Exec: получение stdin |  | 5d | 2024-09-30 | 2024-10-04 | 33 |  | Sys dev 1 | 2 |
| 35 | 1.7.17 | Exec: получение сокета |  | 5d | 2024-09-30 | 2024-10-04 | 33 |  | Sys dev 2 | 2 |
| 36 | 1.7.18 | Exec: получение вывода |  | 5d | 2024-10-07 | 2024-10-11 | 33 |  | Sys dev 1 | 2 |
| 37 | 1.7.19 | Exec: получение статистик /proc |  | 5d | 2024-10-07 | 2024-10-11 | 33 |  | Sys dev 2 | 2 |
| 38 | 1.7.20 | Фронт: обучение |  | 5d | 2024-09-16 | 2024-09-20 |  |  | Front dev 1; Front dev 2; Front dev 3 | 6 |
| 39 | 1.7.21 | Авторизация пользователя |  | 5d | 2024-09-16 | 2024-09-20 |  |  | Back dev 1 | 4 |
| 40 | 1.7.22 | Изменение пароля |  | 5d | 2024-09-23 | 2024-09-27 | 39 |  | Back dev 1 | 4 |
| 41 | 1.7.23 | Получение групп для пользователя.. |  | 5d | 2024-09-30 | 2024-10-04 |  |  | Back dev 1 | 2 |
| 42 | 1.7.24 | Создание и редактирование группы |  | 5d | 2024-10-07 | 2024-10-11 | 41 |  | Back dev 1 | 2 |
| 43 | 1.7.25 | Интеграция: пользователи |  | 5d | 2024-10-14 | 2024-10-18 | 39, 40, 41, 42, 44, 45, 46, 47, 48, 49, 50 |  | Back dev 1; Front dev 1 | 8 |
| 44 | 1.7.26 | Восстановление пароля |  | 5d | 2024-09-23 | 2024-09-27 | 38 |  | Front dev 1 | 1 |
| 45 | 1.7.27 | Welcome страница |  | 5d | 2024-09-23 | 2024-09-27 | 38 |  | Front dev 1 | 1 |
| 46 | 1.7.28 | Страница входа |  | 5d | 2024-09-23 | 2024-09-27 | 38 |  | Front dev 1 | 1 |
| 47 | 1.7.29 | Навигация в шапке |  | 5d | 2024-09-30 | 2024-10-04 |  |  | Front dev 1 | 2 |
| 48 | 1.7.30 | Личный кабинет |  | 5d | 2024-09-30 | 2024-10-04 | 46 |  | Front dev 1 | 2 |
| 49 | 1.7.31 | Создание редактирование группы |  | 5d | 2024-10-07 | 2024-10-11 |  |  | Front dev 1 | 2 |
| 50 | 1.7.32 | Экран групп |  | 5d | 2024-10-07 | 2024-10-11 |  |  | Front dev 1 | 2 |
| 51 | 1.7.33 | Восстановление пароля |  | 5d | 2024-09-16 | 2024-09-20 |  |  | Back dev 2 | 1 |
| 52 | 1.7.34 | Имплементация создания теста |  | 5d | 2024-09-16 | 2024-09-20 |  |  | Back dev 2 | 2 |
| 53 | 1.7.35 | Имплементация получения теста |  | 5d | 2024-09-23 | 2024-09-27 | 52 |  | Back dev 2 | 1 |
| 54 | 1.7.36 | Имплементация поиска тестов по имени |  | 5d | 2024-09-23 | 2024-09-27 | 52 |  | Back dev 2 | 1 |
| 55 | 1.7.37 | Имплементация удаления тестов |  | 5d | 2024-09-30 | 2024-10-04 | 52 |  | Back dev 2 | 2 |
| 56 | 1.7.38 | Имплементация редактирования тестов |  | 5d | 2024-09-30 | 2024-10-04 | 52 |  | Back dev 2 | 1 |
| 57 | 1.7.39 | Интеграция: тесты |  | 5d | 2024-10-14 | 2024-10-18 | 51, 52, 53, 54, 55, 56, 58, 59, 60, 61 |  | Back dev 2; Front dev 2 | 8 |
| 58 | 1.7.40 | Модальное окно создания теста |  | 5d | 2024-09-23 | 2024-09-27 | 38 |  | Front dev 2 | 3 |
| 59 | 1.7.41 | Модальное окно просмотра теста |  | 5d | 2024-09-30 | 2024-10-04 |  |  | Front dev 2 | 2 |
| 60 | 1.7.42 | Модальное окно редактирования теста |  | 5d | 2024-10-07 | 2024-10-11 |  | 30% | Front dev 2 | 1 |
| 61 | 1.7.43 | Страница просмотра тестов |  | 5d | 2024-10-07 | 2024-10-11 |  |  | Front dev 2 | 2 |
| 62 | 1.7.44 | Имплементация создания лабораторной |  | 5d | 2024-09-16 | 2024-09-20 |  |  | Back dev 3 | 2 |
| 63 | 1.7.45 | Имплементация получения лабораторной |  | 5d | 2024-09-16 | 2024-09-20 |  |  | Back dev 3 | 1 |
| 64 | 1.7.46 | Имплементация редактирования лабораторной |  | 5d | 2024-09-23 | 2024-09-27 | 62 |  | Back dev 3 | 1 |
| 65 | 1.7.47 | Имплементация удаления лабораторной |  | 5d | 2024-09-23 | 2024-09-27 | 62 |  | Back dev 3 | 2 |
| 66 | 1.7.48 | Получение попыток сдачи |  | 5d | 2024-09-30 | 2024-10-04 |  |  | Back dev 3 | 2 |
| 67 | 1.7.49 | Интеграция: лабораторные |  | 5d | 2024-10-14 | 2024-10-18 | 62, 63, 64, 65, 68, 69, 70, 71 |  | Back dev 2; Front dev 3 | 8 |
| 68 | 1.7.50 | Модальное окно создания лабораторной |  | 5d | 2024-09-23 | 2024-09-27 | 38 |  | Front dev 3 | 2 |
| 69 | 1.7.51 | Модальное окно редактирования лабораторной |  | 5d | 2024-09-23 | 2024-09-27 | 38 |  | Front dev 3 | 1 |
| 70 | 1.7.52 | Страница просмотра лабораторной |  | 5d | 2024-09-30 | 2024-10-04 |  |  | Front dev 3 | 3 |

| ID | WBS | Task | Type | Duration | Start | Finish | Predecessors | Resources | Cost |
| --- | --- | --- | --- | --- | --- | --- | --- | --- | --- |
| 71 | 1.7.53 | Страница просмотра лабораторных |  | 5d | 2024-10-07 | 2024-10-11 |  | Front dev 3 | 3 |
| 72 | 1.8 | Фаза 1 - дедлайн | milestone | 0d | 2024-10-28 | 2024-10-28 | 18 |  |  |
| 73 | 1.9 | **Фаза 2** |  | 20d | 2024-10-28 | 2024-11-22 | 18 |  |  |
| 74 | 1.9.1 | Тесты: доанализ требований 2 |  | 20d | 2024-10-28 | 2024-11-22 |  | Test Analyst 1 | 8 |
| 75 | 1.9.2 | Web: доанализ требований 2 |  | 20d | 2024-10-28 | 2024-11-22 |  | Test Analyst 2 | 8 |
| 76 | 1.9.3 | QA обвязки 1 |  | 10d | 2024-10-28 | 2024-11-08 |  | Manager-QA [50%]; QA [50%] | 15 |
| 77 | 1.9.4 | QA тестов 2 |  | 10d | 2024-11-11 | 2024-11-22 |  | Manager-QA [50%]; QA [50%] | 15 |
| 78 | 1.9.5 | Тесты многозадачности |  | 5d | 2024-10-28 | 2024-11-01 |  | Sys dev 3 | 2 |
| 79 | 1.9.6 | Тесты сети |  | 10d | 2024-10-28 | 2024-11-08 |  | Sys dev 4 | 2 |
| 80 | 1.9.7 | Тесты кэша |  | 5d | 2024-11-11 | 2024-11-15 |  | Sys dev 3 | 2 |
| 81 | 1.9.8 | Нагрузочные тесты |  | 10d | 2024-11-04 | 2024-11-15 |  | Sys dev 4 | 6 |
| 82 | 1.9.9 | Интеграция: нагрузочные тесты |  | 5d | 2024-11-18 | 2024-11-22 | 78, 79, 80, 81, 83, 84 | Sys dev 1; Sys dev 2; Sys dev 3; Sys dev 4 | 16 |
| 83 | 1.9.10 | Exec: жесткие ограничения cgroup 1 |  | 15d | 2024-10-28 | 2024-11-15 |  | Sys dev 1 | 6 |
| 84 | 1.9.11 | Exec: жесткие ограничения cgroup 2 |  | 15d | 2024-10-28 | 2024-11-15 |  | Sys dev 2 | 6 |
| 85 | 1.9.12 | Часть модального окна создания/редактирования лабораторной - форма выбора тестов |  | 5d | 2024-10-28 | 2024-11-01 | 54, 68, 69 | Front dev 3 | 1 |
| 86 | 1.9.13 | Страница просмотра попыток сдачи |  | 5d | 2024-11-04 | 2024-11-08 | 66 | Front dev 3 | 2 |
| 87 | 1.9.14 | Модальное окно загрузки лабораторных |  | 5d | 2024-11-11 | 2024-11-15 | 86 | Front dev 3 | 2 |
| 88 | 1.9.15 | Интеграция попыток сдачи |  | 5d | 2024-11-18 | 2024-11-22 | 85, 86, 87, 89 | Back dev 3; Front dev 3 | 8 |
| 89 | 1.9.16 | Проверка лабораторной в новой попытке сдачи |  | 10d | 2024-10-28 | 2024-11-08 |  | Back dev 3 | 8 |
| 90 | 1.9.17 | Создание сессий сдачи |  | 5d | 2024-10-28 | 2024-11-01 |  | Back dev 2 | 2 |
| 91 | 1.9.18 | Получение сессий сдачи |  | 5d | 2024-11-04 | 2024-11-08 |  | Back dev 2 | 2 |
| 92 | 1.9.19 | Поиск и фильтрация сессий сдачи |  | 5d | 2024-11-11 | 2024-11-15 |  | Back dev 2 | 2 |
| 93 | 1.9.20 | Интеграция сессий сдачи |  | 5d | 2024-11-18 | 2024-11-22 | 90, 91, 92, 94, 95, 96 | Back dev 2; Front dev 2 | 8 |
| 94 | 1.9.21 | Просмотр сессий сдачи |  | 5d | 2024-10-28 | 2024-11-01 |  | Front dev 2 | 2 |
| 95 | 1.9.22 | Просмотр сессий сдачи студентов с поиском |  | 5d | 2024-11-04 | 2024-11-08 |  | Front dev 2 | 2 |
| 96 | 1.9.23 | Модификация страницы просмотра сессии сдачи - для преподавателя |  | 5d | 2024-11-11 | 2024-11-15 |  | Front dev 2 | 1.5 |
| 97 | 1.9.24 | Личная информация по всем пользователям |  | 5d | 2024-10-28 | 2024-11-01 |  | Back dev 1 | 2 |
| 98 | 1.9.25 | Личная информация пользователя |  | 5d | 2024-10-28 | 2024-11-01 |  | Back dev 1 | 2 |
| 99 | 1.9.26 | Создание/редактирование пользователя |  | 5d | 2024-11-04 | 2024-11-08 |  | Back dev 1 | 2 |
| 100 | 1.9.27 | Создание множества пользователей |  | 5d | 2024-11-11 | 2024-11-15 |  | Back dev 1 | 2 |
| 101 | 1.9.28 | Интеграция пользователей |  | 5d | 2024-11-18 | 2024-11-22 | 97, 98, 99, 100, 102, 103, 104 | Back dev 1; Front dev 1 | 8 |
| 102 | 1.9.29 | Модалки создания редактирования пользователя |  | 5d | 2024-10-28 | 2024-11-01 |  | Front dev 1 | 2 |
| 103 | 1.9.30 | Экран всех пользователей для админа |  | 5d | 2024-11-04 | 2024-11-08 |  | Front dev 1 | 2 |
| 104 | 1.9.31 | Переход на экран группы |  | 5d | 2024-11-11 | 2024-11-15 |  | Front dev 1 | 2 |
| 105 | 1.10 | Фаза 2 - дедлайн | milestone | 0d | 2024-12-02 | 2024-12-02 | 73 |  |  |

| ID | WBS | Task | Type | Duration | Start | Finish | Predecessors | Resources | Cost |
| --- | --- | --- | --- | --- | --- | --- | --- | --- | --- |
| 106 | 1.11 | **Фаза 3** |  | 20d | 2024-12-02 | 2024-12-27 | 73 |  |  |
| 107 | 1.11.1 | Web: доанализ требований 3 |  | 20d | 2024-12-02 | 2024-12-27 |  | Test Analyst 2 | 8 |
| 108 | 1.11.2 | QA обвязки 2 |  | 10d | 2024-12-02 | 2024-12-13 |  | Manager-QA [50%]; QA [50%] | 15 |
| 109 | 1.11.3 | Общее QA |  | 10d | 2024-12-16 | 2024-12-27 |  | Manager-QA [50%]; QA [50%] | 15 |
| 110 | 1.11.4 | Модификация страницы просмотра лабораторных - для студента |  | 5d | 2024-12-02 | 2024-12-06 |  | Front dev 3 | 1.5 |
| 111 | 1.11.5 | Модификация страницы просмотра лабораторных - для учителя |  | 5d | 2024-12-02 | 2024-12-06 |  | Front dev 3 | 1.5 |
| 112 | 1.11.6 | Модификация страницы просмотра лабораторной - для студента |  | 5d | 2024-12-09 | 2024-12-13 |  | Front dev 3 | 1.5 |
| 113 | 1.11.7 | Модификация страницы просмотра лабораторной - для учителя |  | 5d | 2024-12-09 | 2024-12-13 |  | Front dev 3 | 1.5 |
| 114 | 1.11.8 | Модификация страницы просмотра попытки сдачи - для преподавателя |  | 5d | 2024-12-16 | 2024-12-20 |  | Front dev 3 | 1.5 |
| 115 | 1.11.9 | Переход к лабораторной по студенту |  | 5d | 2024-12-02 | 2024-12-06 |  | Front dev 2 | 1.5 |
| 116 | 1.11.10 | Фронт: исправление багов |  | 20d | 2024-12-02 | 2024-12-27 |  | Front dev 1; Front dev 2 | 20 |
| 117 | 1.11.11 | Бэк: исправление багов |  | 20d | 2024-12-02 | 2024-12-27 |  | Back dev 2; Back dev 3 | 20 |
| 118 | 1.11.12 | Данные для рейтинговой таблицы |  | 10d | 2024-12-02 | 2024-12-13 |  | Back dev 1 | 10 |
| 119 | 1.11.13 | Интеграция рейтинговой таблицы |  | 5d | 2024-12-23 | 2024-12-27 | 118, 120, 121 | Back dev 1; Front dev 1 | 8 |
| 120 | 1.11.14 | Рейтинговая таблица |  | 10d | 2024-12-02 | 2024-12-13 |  | Front dev 1 | 10 |
| 121 | 1.11.15 | Сортировки по срезу |  | 5d | 2024-12-16 | 2024-12-20 | 118 | Front dev 2 | 1.5 |
| 122 | 1.11.16 | Тесты под valgrind и санитайзерами |  | 10d | 2024-12-02 | 2024-12-13 |  | Sys dev 3 | 6 |
| 123 | 1.11.17 | Тесты с ограниченными ресурсами |  | 10d | 2024-12-02 | 2024-12-13 |  | Sys dev 4 | 6 |
| 124 | 1.11.18 | Интеграция: дополнительные тесты |  | 5d | 2024-12-16 | 2024-12-20 | 122, 123, 125, 126 | Sys dev 1; Sys dev 2; Sys dev 3; Sys dev 4 | 16 |
| 125 | 1.11.19 | Exec: ограничение fs, mount |  | 10d | 2024-12-02 | 2024-12-13 |  | Sys dev 1 | 6 |
| 126 | 1.11.20 | Exec: ограничение network workspace |  | 10d | 2024-12-02 | 2024-12-13 |  | Sys dev 2 | 6 |
| 127 | 1.12 | Фаза 3-дедлайн | milestone | 0d | 2024-12-30 | 2024-12-30 | 106FF |  |  |
